# Разработка_и_внедрение_ИСУП_Едленко

How a schedule from MS Project changed from version to version. A marks actual dates.

## Version 1 (saved 2022-10-21)

| ID | Task | Duration | Start | Finish | Predecessors | Total float |
| --- | --- | --- | --- | --- | --- | --- |
| 1 | Подписание договора на разработку ИСУП | 0d | 2015-09-01 | 2015-09-01 |  | 10d |
| 2 | Подготовительные работы | 10d | 2015-09-01 | 2015-09-14 |  | 0d |
| 3 | Определение целей и назначения системы | 5d | 2015-09-01 | 2015-09-07 |  | 0d |
| 4 | Определение участников проекта | 5d | 2015-09-08 | 2015-09-14 | 3 | 0d |
| 5 | Разработка устава проекта | 5d | 2015-09-08 | 2015-09-14 | 4SS | 0d |

## Version 2 (saved 2022-11-11)

Note of the change: '12.11.22'

Last finish 2015-09-14 → 2023-07-25 (+2871d).

Added:

| ID | Task | Duration | Start | Finish | Predecessors | Resources |
| --- | --- | --- | --- | --- | --- | --- |
| 2 | **Подготовительные работы** | 10d | 2022-09-01 | 2022-09-14 | 1 |  |
| 3 | Определениецелей и назначения системы | 5d | 2022-09-01 | 2022-09-07 |  | Данилов А.В; Иванова Р.С. |
| 6 | Окончание подготовительных работ(веха) | 0d | 2022-09-14 | 2022-09-14 | 5 |  |
| 7 | **Обследование бизнес процессов, формирование ТЗ** | 22d | 2022-09-15 | 2022-10-14 | 2 |  |
| 8 | Обследование бизнес процессов | 5d | 2022-09-15 | 2022-09-21 |  | Иванова Р.С.; Командировочные [0.1%] |
| 9 | Постановка задачи | 5d | 2022-09-22 | 2022-09-28 | 8 | Иванова Р.С. |
| 10 | Формирование ТЗ на разработку ИСУП | 12d | 2022-09-29 | 2022-10-14 | 9 | Жорин У.Д. |
| 11 | Согласование ТЗ на разработку ИСУП (веха) | 0d | 2022-10-14 | 2022-10-14 | 10 |  |
| 12 | **Разработка и адаптация системы** | 80d | 2022-10-17 | 2023-02-15 | 7 |  |
| 13 | Определение подсистем ИСУП | 10d | 2022-10-17 | 2022-10-28 |  | Петров А.А. |
| 14 | **Проектирование и адаптация подсистемм ИСУП** | 80d | 2022-10-17 | 2023-02-15 |  |  |
| 15 | Проектирование подсистемы проектного бюджетирования | 25d | 2022-10-17 | 2022-11-18 |  | Калиничев Д.И. |
| 16 | Проектирование подсистемы учета трудозатрат по проектам | 50d | 2022-10-17 | 2022-12-23 |  | Калиничев Д.И.; Рысаков А.Р. |
| 17 | Проектирование подсистемы календарного сетевого планирования | 25d | 2022-10-17 | 2022-11-18 |  | Кузьмин Г.В. |
| 18 | Адаптация подсистем ИСУП | 20d | 2022-12-26 | 2023-01-20 | 15, 16, 17 | Золотарев В.А. |
| 19 | Тестирование ИСУП | 15d | 2023-01-23 | 2023-02-15 | 18 | Тестировщик [200%] |
| 20 | Тестирование ИСУП завершение (веха) | 0d | 2023-02-15 | 2023-02-15 | 19 |  |
| 21 | **Внедрение ИСУП** | 110d | 2023-02-16 | 2023-07-25 | 12 |  |
| 22 | **Подготовак инфраструктуры** | 11d | 2023-02-16 | 2023-03-03 |  |  |
| 23 | Подготовка инфраструктуры для развертывания ИСУП | 12d | 2023-02-16 | 2023-03-03 |  | Петров А.А. |
| 24 | **Опытная эксплуатация** | 78d | 2023-03-06 | 2023-06-26 | 22 |  |
| 25 | Разработка сопроводительной документации для эксплуатации | 7d | 2023-03-06 | 2023-03-14 |  | Иванова Р.С. |
| 26 | Опытная эксплуатация | 30d | 2023-03-15 | 2023-04-25 | 25 | Ломанов П.А. |
| 27 | Оценка соответсвтия системы ТЗ | 30d | 2023-04-26 | 2023-06-06 | 26 | Петров А.А. |
| 28 | Устранение замечаний в работе ИСУП | 14d | 2023-06-07 | 2023-06-26 | 27 | Рысаков А.Р. |
| 29 | Окончание опытной эксплуатации | 0d | 2023-06-26 | 2023-06-26 | 28 | Демин И.В. |
| 30 | **Передача в промышленную эксплуатацию** | 21d | 2023-06-26 | 2023-07-25 | 24 |  |
| 31 | Распоряжение о передаче ИСУП в промышленную эксплуатацию | 0d | 2023-06-26 | 2023-06-26 |  |  |
| 32 | Подготовка эксплуатационной документации | 21d | 2023-06-27 | 2023-07-25 | 31 | Исакова П.Д |
| 33 | Передача ИСУП в промышленную эксплуатацию | 0d | 2023-07-25 | 2023-07-25 | 32 |  |

Removed: 2 Подготовительные работы; 3 Определение целей и назначения системы

Changed:

| ID | Task | Start | Finish | Total float | Predecessors | Other |
| --- | --- | --- | --- | --- | --- | --- |
| 1 | Подписание договора | 2015-09-01 → 2022-09-01 (+2557d) | 2015-09-01 → 2022-09-01 (+2557d) | 10d → 0d |  | was named Подписание договора на разработку ИСУП; baseline start none → 2022-09-01; baseline finish none → 2022-09-01 |
| 4 | Определение участников проекта | 2015-09-08 → 2022-09-08 (+2557d) | 2015-09-14 → 2022-09-14 (+2557d) |  | Определение целей и назначения системы → 3 | resources none → Данилов А.В; baseline start none → 2022-09-08; baseline finish none → 2022-09-14 |
| 5 | Разработка устава проекта | 2015-09-08 → 2022-09-08 (+2557d) | 2015-09-14 → 2022-09-14 (+2557d) |  | 4SS → 3 | resources none → Ломанов П.А.; baseline start none → 2022-09-08; baseline finish none → 2022-09-14 |

## Version 3 (data date 2022-12-01, saved 2022-12-02)

Last finish stays 2023-07-25. Complete tasks 0 → 12.

Changed:

| ID | Task | Start | Finish | Duration | Complete | Total float | Other |
| --- | --- | --- | --- | --- | --- | --- | --- |
| 1 | Подписание договора | 2022-09-01 A | 2022-09-01 A |  | 0% → 100% | 0d → none |  |
| 2 | **Подготовительные работы** | 2022-09-01 A | 2022-09-14 A |  | 0% → 100% | 0d → none |  |
| 3 | Определениецелей и назначения системы | 2022-09-01 A | 2022-09-07 A |  | 0% → 100% | 0d → none |  |
| 4 | Определение участников проекта | 2022-09-08 A | 2022-09-14 A |  | 0% → 100% | 0d → none |  |
| 5 | Разработка устава проекта | 2022-09-08 A | 2022-09-14 A |  | 0% → 100% | 0d → none |  |
| 6 | Окончание подготовительных работ(веха) | 2022-09-14 A | 2022-09-14 A |  | 0% → 100% | 0d → none |  |
| 7 | **Обследование бизнес процессов, формирование ТЗ** | 2022-09-15 A | 2022-10-14 A |  | 0% → 100% | 0d → none |  |
| 8 | Обследование бизнес процессов | 2022-09-15 A | 2022-09-21 A |  | 0% → 100% | 0d → none |  |
| 9 | Постановка задачи | 2022-09-22 A | 2022-09-28 → 2022-10-03 A (+5d) | 5d → 7.5d | 0% → 100% | 0d → none |  |
| 10 | Формирование ТЗ на разработку ИСУП | 2022-09-29 → 2022-10-03 A (+4d) | 2022-10-14 A | 12d → 10d | 0% → 100% | 0d → none | constraint none → finish no earlier than 2022-10-14; resources Жорин У.Д. → Жорин У.Д.; Демин И.В. |
| 11 | Согласование ТЗ на разработку ИСУП (веха) | 2022-10-14 A | 2022-10-14 A |  | 0% → 100% | 0d → none |  |
| 12 | **Разработка и адаптация системы** | 2022-10-17 A |  |  | 0% → 65% |  |  |
| 13 | Определение подсистем ИСУП | 2022-10-17 A | 2022-10-28 → 2022-11-04 A (+7d) | 10d → 15d | 0% → 100% | 70d → none |  |
| 14 | **Проектирование и адаптация подсистемм ИСУП** | 2022-10-17 A |  |  | 0% → 61% |  |  |
| 15 | Проектирование подсистемы проектного бюджетирования | 2022-10-17 A | 2022-11-18 A |  | 0% → 100% | 24d → none |  |
| 16 | Проектирование подсистемы учета трудозатрат по проектам | 2022-10-17 A |  |  | 0% → 66% |  |  |
| 17 | Проектирование подсистемы календарного сетевого планирования | 2022-10-17 A | 2022-11-18 A |  | 0% → 100% | 24d → none |  |
